# BS_AT02_Raspored_Aktivnosti

Schedule from MS Project, 2024-10-30 to 2025-02-06.

## Calendars

- Standard: Mon-Fri 08:00-12:00, 13:00-17:00; Sat-Sun off. Exceptions (off unless hours are given): 2024-11-09 to 2024-11-10 08:00-12:00, 13:00-17:00, 2024-11-16 08:00-12:00, 13:00-17:00, 2024-11-30 to 2024-12-01 08:00-12:00, 13:00-17:00, 2024-12-14 to 2024-12-15 08:00-12:00, 13:00-17:00.

## Resources

| Resource |
| --- |
| Ajša Tahirović |
| Aldina Avdić |

## Schedule

| ID | WBS | Task | Type | Duration | Start | Finish | Predecessors | Total slack | Free slack | Constraint | Resources | Work |
| --- | --- | --- | --- | --- | --- | --- | --- | --- | --- | --- | --- | --- |
| 1 | 1 | **Očekivani rezultati** |  | 78d | 2024-10-30 | 2025-02-06 |  | 0d |  |  | Ajša Tahirović | 624h |
| 2 | 1.1 | Početak projekta | milestone | 0d | 2024-10-30 | 2024-10-30 | 16SS | 78d |  | start no earlier than 2024-10-24 | Aldina Avdić |  |
| 3 | 1.2 | Vizija sistema | milestone | 0d | 2024-11-07 | 2024-11-07 | 19 | 71d |  |  | Ajša Tahirović |  |
| 4 | 1.3 | Dokument o zahtevima | milestone | 0d | 2024-11-14 | 2024-11-14 | 25 | 64d |  | start no earlier than 2024-11-13 | Aldina Avdić [50%] |  |
| 5 | 1.4 | Arhitekturni prototip | milestone | 0d | 2024-11-27 | 2024-11-27 | 26 | 54d |  | start no earlier than 2024-11-16 | Ajša Tahirović |  |
| 6 | 1.5 | Prototipi korisničkog interfejsa | milestone | 0d | 2024-12-03 | 2024-12-03 | 28 | 48d |  | start no earlier than 2024-11-20 | Ajša Tahirović |  |
| 7 | 1.6 | Arhitekturni projekat | milestone | 0d | 2024-11-27 | 2024-11-27 |  | 55d |  | start no earlier than 2024-11-27 | Ajša Tahirović |  |
| 8 | 1.7 | Detaljni projekat | milestone | 0d | 2024-12-19 | 2024-12-19 | 32 | 34d |  | start no earlier than 2024-12-11 | Aldina Avdić |  |
| 9 | 1.8 | Beta verzija | milestone | 0d | 2024-12-24 | 2024-12-24 | 33 | 31d |  | start no earlier than 2024-12-14 | Ajša Tahirović |  |
| 10 | 1.9 | Plan testiranja | milestone | 0d | 2024-12-30 | 2024-12-30 | 34 | 27d |  | start no earlier than 2024-12-18 | Ajša Tahirović |  |
| 11 | 1.10 | Izveštaj o testiranju | milestone | 0d | 2025-01-01 | 2025-01-01 | 35 | 25d |  | start no earlier than 2024-12-25 | Ajša Tahirović |  |
| 12 | 1.11 | Konačna verzija | milestone | 0d | 2025-01-08 | 2025-01-08 | 37, 39 | 20d |  | start no earlier than 2024-12-30 | Ajša Tahirović |  |
| 13 | 1.12 | Korisničko iskustvo | milestone | 0d | 2025-01-23 | 2025-01-23 | 48, 45 | 9d |  | start no earlier than 2025-01-07 | Ajša Tahirović |  |
| 14 | 1.13 | Prezentacija proizvoda | milestone | 0d | 2025-02-06 | 2025-02-06 | 43 | 0d |  | start no earlier than 2025-02-06 | Ajša Tahirović |  |
| 16 | 2 | **Faza planiranja projekta** |  | 12d? | 2024-10-30 | 2024-11-12 |  | 7d | 0d |  |  | 96h |
| 17 | 2.1 | **Preliminarna iteracija** |  | 12d? | 2024-10-30 | 2024-11-12 |  | 7d | 0d |  |  | 96h |
| 18 | 2.1.1 | Definisanje zahteva |  | 3d? | 2024-10-30 | 2024-11-01 |  | 7d | 0d |  | Aldina Avdić | 24h |
| 19 | 2.1.2 | Izrada vizije sistema |  | 4d? | 2024-11-04 | 2024-11-07 | 18 | 7d | 0d | finish no earlier than 2024-11-01 | Aldina Avdić | 32h |
| 20 | 2.1.3 | Modelovanje domena | milestone | 0d | 2024-11-07 | 2024-11-07 | 19 | 7d | 0d | finish no earlier than 2024-11-04 | Ajša Tahirović |  |
| 21 | 2.1.4 | Analiza slučajeva korišćenja |  | 5d? | 2024-11-08 | 2024-11-12 | 20 | 7d |  | finish no earlier than 2024-11-11 | Ajša Tahirović | 40h |
| 23 | 3 | **Faza razrade projekta** |  | 18d? | 2024-11-13 | 2024-12-03 | 16 | 7d | 0d |  |  | 144h |
| 24 | 3.1 | **Iteracija R1 - Razvoj arhitekturnog prototipa** |  | 18d? | 2024-11-13 | 2024-12-03 | 17 | 7d |  |  |  | 144h |
| 25 | 3.1.1 | Izrada dokumenta o zahtevima |  | 2d? | 2024-11-13 | 2024-11-14 |  | 7d | 0d | start no earlier than 2024-11-13 | Aldina Avdić | 16h |
| 26 | 3.1.2 | Implementacija arhitekturnog prototipa |  | 10d? | 2024-11-15 | 2024-11-27 | 25 | 7d | 0d | finish no earlier than 2024-11-19 | Ajša Tahirović | 80h |
| 27 | 3.1.3 | Testiranje arhitekture |  | 3d? | 2024-11-28 | 2024-11-30 | 26 | 7d | 0d | start no earlier than 2024-11-19 | Ajša Tahirović | 24h |
| 28 | 3.1.4 | Implementacija protoipa korisničkog interfejsa |  | 3d? | 2024-12-01 | 2024-12-03 | 27 | 7d | 0d | finish no earlier than 2024-11-29 | Ajša Tahirović | 24h |

| ID | WBS | Task | Duration | Start | Finish | Predecessors | Total slack | Free slack | Constraint | Resources | Work |
| --- | --- | --- | --- | --- | --- | --- | --- | --- | --- | --- | --- |
| 30 | 4 | **Faza izrade projekta** | 28d? | 2024-12-04 | 2025-01-08 | 23 | 7d |  |  |  | 360h |
| 31 | 4.1 | **Iteracija I1 - Razvoj beta faze** | 23d | 2024-12-04 | 2025-01-01 |  | 7d |  |  |  | 312h |
| 32 | 4.1.1 | Izrada detaljnog projekta | 14d | 2024-12-04 | 2024-12-19 |  | 34d | 0d | finish no earlier than 2024-12-15 | Ajša Tahirović | 112h |
| 33 | 4.1.2 | Implementacija beta verzije | 17d | 2024-12-04 | 2024-12-24 |  | 7d | 0d | finish no earlier than 2024-12-18 | Aldina Avdić | 136h |
| 34 | 4.1.3 | Izrada plana testiranja | 4d | 2024-12-25 | 2024-12-30 | 33 | 7d | 0d | finish no earlier than 2024-12-24 | Ajša Tahirović | 32h |
| 35 | 4.1.4 | Testiranje sistema | 2d | 2024-12-31 | 2025-01-01 | 34 | 20d | 0d | start no earlier than 2024-12-25 | Ajša Tahirović | 16h |
| 36 | 4.1.5 | Izjava izvestaja o testiranju | 2d | 2024-12-31 | 2025-01-01 | 34 | 7d | 5d | finish no earlier than 2024-12-26 | Ajša Tahirović | 16h |
| 37 | 4.2 | **Iteracije I2 - Razvoj konačne verzije** | 5d? | 2025-01-02 | 2025-01-08 | 35 | 20d | 0d |  |  | 48h |
| 38 | 4.2.1 | Implementacija konačne verzije | 4d | 2025-01-02 | 2025-01-07 |  | 20d | 0d | start no earlier than 2024-12-27 | Ajša Tahirović | 32h |
| 39 | 4.2.2 | Testiranje konačne verzije | 1d? | 2025-01-08 | 2025-01-08 | 38 | 20d |  |  | Ajša Tahirović | 8h |
| 40 | 4.2.3 | Ažuriranje izveštaja o testiranju | 1d? | 2025-01-08 | 2025-01-08 | 38 | 20d |  | start no earlier than 2025-01-02 | Ajša Tahirović | 8h |
| 42 | 5 | **Faza okončanja projekta** | 18d? | 2025-01-09 | 2025-02-03 | 36 | 2d |  |  |  | 256h |
| 43 | 5.1 | **Iteracija O1 - Instalacija sistema** | 18d? | 2025-01-09 | 2025-02-03 |  | 2d |  |  |  | 256h |
| 44 | 5.1.1 | Sređivanje projektne dokumentacije | 7d | 2025-01-09 | 2025-01-17 |  | 6d | 0d | start no earlier than 2025-01-09 | Aldina Avdić | 56h |
| 45 | 5.1.2 | Izrada korisničkog uputstva | 6d | 2025-01-20 | 2025-01-27 | 44 | 6d | 0d |  | Ajša Tahirović | 48h |
| 46 | 5.1.3 | Instalacija sistema | 1d? | 2025-01-28 | 2025-01-28 | 45 | 6d |  |  | Ajša Tahirović | 8h |
| 47 | 5.1.4 | Sređivanje projektne dokumentacije | 8d | 2025-01-09 | 2025-01-20 |  | 2d | 0d | start no earlier than 2025-01-09 | Ajša Tahirović | 64h |
| 48 | 5.1.5 | Izrada korisničkog uputstva | 3d | 2025-01-21 | 2025-01-23 | 47 | 2d | 0d |  | Aldina Avdić | 24h |
| 49 | 5.1.6 | Instalacija sistema | 7d | 2025-01-24 | 2025-02-03 | 48 | 2d |  | start no earlier than 2025-01-24 | Ajša Tahirović | 56h |
